# Sistema DDI

Schedule from a web Gantt chart, 2025-03-02 to 2025-09-30.
Saturdays and Sundays are off

## Schedule

| ID | WBS | Task | Duration | Start | Finish | Predecessors | Complete | inPeople | Status |
| --- | --- | --- | --- | --- | --- | --- | --- | --- | --- |
| 2 | 1 | **Configuracion Inicial** | 28d | 2025-03-02 | 2025-04-09 |  | 100% |  |  |
| 3 | 1.1 | Instalación y configuración de Servicios Web | 7d | 2025-03-02 | 2025-03-11 |  | 100% | Jonathan Velásquez | done |
| 4 | 1.2 | Configuración de Servidor en la red local Municipal | 10d | 2025-03-11 | 2025-03-25 | 3 | 100% | Jonathan Velásquez | done |
| 5 | 1.3 | Lanzamiento del Sitio Web | 8d | 2025-03-30 | 2025-04-09 |  | 100% | Jonathan Velásquez |  |
| 6 | 1.4 | Configuración sitio Web | 8d | 2025-03-25 | 2025-04-04 |  | 100% | Jonathan Velásquez |  |
| 7 | 2 | **Pruebas del sistema** | 40d | 2025-04-07 | 2025-05-30 |  | 95% |  | done |
| 8 | 2.1 | Pruebas de Conexión DB | 2d | 2025-04-07 | 2025-04-08 | 6 | 100% | Jonathan Velásquez | done |
| 9 | 2.2 | Pruebas de comunicación entre frontend y backend | 8d | 2025-04-09 | 2025-04-18 | 8 | 100% | Jonathan Velásquez | done |
| 10 | 2.3 | Configuración de Perfile Administrativos | 5d | 2025-04-21 | 2025-04-25 | 9 | 100% | Jonathan Velásquez | done |
| 11 | 2.4 | Pruebas de Ingreso/Login | 5d | 2025-04-28 | 2025-05-02 | 10 | 100% | Jonathan Velásquez | done |
| 12 | 2.5 | Pruebas de almacenar Requerimientos de sistemas. | 10d | 2025-05-05 | 2025-05-16 | 11 | 100% | Jonathan Velásquez | done |
| 13 | 2.6 | Pruebas de Notificaciones Internas | 10d | 2025-05-19 | 2025-05-30 | 12 | 80% | Jonathan Velásquez | done |
| 14 | 3 | **Carga de datos** | 112d | 2025-04-28 | 2025-09-30 |  | 53% |  |  |
| 15 | 3.1 | Registro manual de funcionarios | 112d | 2025-04-28 | 2025-09-30 | 10 | 50% | Jonathan Velásquez y Sofia Cortez |  |
| 16 | 3.2 | Registro de Computadores Municipales | 112d | 2025-04-28 | 2025-09-30 | 10 | 50% | Jonathan Velásquez y Sofia Cortez |  |
| 17 | 3.3 | Registro de Sistemas Municipales | 10d | 2025-04-28 | 2025-05-09 | 10 | 100% | Jonathan Velásquez | done |
| 18 | 3.4 | Verificar relación entre Funcionarios, Sistemas y Computadores. | 5d | 2025-05-12 | 2025-05-16 | 17 | 100% | Jonathan Velásquez | done |
| 19 | 3.5 | Generar Informes y Listados | 10d | 2025-06-02 | 2025-06-13 | 13 | 60% | Jonathan Velásquez |  |
| 20 | 4 | Corrección de errores | 135d | 2025-03-25 | 2025-09-30 |  | 80% | Jonathan Velásquez |  |

Notes:
- 13: Las pruebas tuvieron errores ya que no verifica a quien notificar.
- 15: El proceso va en la mitad de los funcionarios Ingresados (300 aprox.)
- 16: El proceso va en la mitad de los Computadores Ingresados (300 aprox.)
- 19: Falta mejorar y agregar estadisticas sobre los informes.
